# IVI CPG + STDP

How a schedule from GanttProject changed from version to version. A marks actual dates.

## Version 1 (saved 2023-07-26)

Note of the change: rearranged dir structure

| ID | WBS | Task | Duration | Start | Finish | Predecessors |
| --- | --- | --- | --- | --- | --- | --- |
| 1 | 1 | **Computational infrastructure setup** | 3d | 2023-07-21 | 2023-07-25 |  |
| 2 |  | Neuron GPU | 3d | 2023-07-21 | 2023-07-25 |  |
| 3 |  | NEST GPU | 3d | 2023-07-21 | 2023-07-25 |  |
| 4 |  | select NEST / NEURON | 0d | 2023-07-26 | 2023-07-26 | 3 |
| 5 | 2 | **CPG + STDP modeling** | 50d | 2023-07-26 | 2023-10-03 |  |
| 6 |  | brian2->N migration | 10d | 2023-07-26 | 2023-08-08 | 2 |
| 7 |  | Izhi -> HH migration | 10d | 2023-07-26 | 2023-08-08 | 2 |
| 8 |  | F-E + STDP | 10d | 2023-08-09 | 2023-08-22 | 7 |
| 9 |  | Testing F-E | 5d | 2023-08-23 | 2023-08-29 | 8 |
| 10 |  | BS + STDP projections | 10d | 2023-08-30 | 2023-09-12 | 8, 9 |
| 11 |  | Testing BS projections | 5d | 2023-09-13 | 2023-09-19 | 9, 10 |
| 12 |  | L-R + STDP | 5d | 2023-09-20 | 2023-09-26 | 8, 11 |
| 13 |  | Testing L-R | 5d | 2023-09-27 | 2023-10-03 | 12 |
| 14 |  | Tested CPG + STDP | 0d | 2023-10-04 | 2023-10-04 | 13 |
| 15 |  | How many neurons can we have? | 0d | 2023-10-04 | 2023-10-04 | 5 |
| 16 | 4 | **Hardware infrastructure setup** | 20d | 2023-08-15 | 2023-09-11 |  |
| 17 |  | order soler station | 20d | 2023-08-15 | 2023-09-11 |  |
| 18 |  | order oscilloscope | 10d | 2023-08-15 | 2023-08-28 |  |
| 19 |  | harware infrastructure ready | 0d | 2023-08-29 | 2023-08-29 | 18 |
| 20 | 5 | **Hardware** | 70d | 2023-10-02 | 2024-01-09 |  |
| 21 | 5.1 | **Design** | 40d | 2023-10-02 | 2023-11-24 |  |
| 22 |  | PCBs design of on leakage | 15d | 2023-10-02 | 2023-10-20 |  |
| 23 |  | PCBs desgin learning feedback | 20d | 2023-10-23 | 2023-11-17 | 22 |
| 24 |  | PCB design of refractory period | 5d | 2023-11-20 | 2023-11-24 | 23 |
| 25 | 5.2 | **Implementation** | 30d | 2023-11-27 | 2024-01-09 | 21 |
| 26 |  | Order PCBs | 15d | 2023-11-27 | 2023-12-15 |  |
| 27 |  | Assemble PCBs | 15d | 2023-12-18 | 2024-01-09 | 26 |

## Version 2 (saved 2023-07-31)

Note of the change: completed update PP

Last finish stays 2024-01-09.

Added:

| ID | Task | Duration | Start | Finish | Predecessors |
| --- | --- | --- | --- | --- | --- |
| 9 | **F** | 7d | 2023-07-31 | 2023-08-08 |  |
| 10 | + F + birsting | 3d | 2023-07-31 | 2023-08-02 |  |
| 11 | M-F | 1d | 2023-08-03 | 2023-08-03 | 10 |
| 12 | F muscle | 2d | 2023-08-04 | 2023-08-07 | 11 |
| 13 | Ia -> M-F, Ia, F | 1d | 2023-08-08 | 2023-08-08 | 12 |
| 14 | **E** | 4d | 2023-08-09 | 2023-08-14 | 9 |
| 15 | E, M-E, E muscle, Ia | 2d | 2023-08-09 | 2023-08-10 |  |
| 16 | InF, InE | 1d | 2023-08-11 | 2023-08-11 | 15 |
| 17 | Ia-F, Ia-E | 1d | 2023-08-14 | 2023-08-14 | 16 |
| 19 | Left leg | 0d | 2023-08-17 | 2023-08-17 | 18 |
| 21 | **Right leg** | 10d | 2023-08-15 | 2023-08-28 |  |

Removed: 11 Testing BS projections; 15 How many neurons can we have?

Changed:

| ID | Task | Start | Finish | Duration | Predecessors |
| --- | --- | --- | --- | --- | --- |
| 5 | **CPG + STDP modeling** |  | 2023-10-03 → 2023-08-28 (-36d) | 50d → 24d |  |
| 6 | brian2->N migration |  | 2023-08-08 → 2023-07-27 (-12d) | 10d → 2d |  |
| 7 | Izhi -> HH migration |  | 2023-08-08 → 2023-07-28 (-11d) | 10d → 3d |  |
| 8 | **F-E + STDP** | 2023-08-09 → 2023-07-31 (-9d) | 2023-08-22 → 2023-08-14 (-8d) | 10d → 11d |  |
| 18 | Testing F-E | 2023-08-23 → 2023-08-01 (-22d) | 2023-08-29 → 2023-08-16 (-13d) | 5d → 12d | 8 → none |
| 20 | BS + STDP projections | 2023-08-30 → 2023-07-28 (-33d) | 2023-09-12 → 2023-08-17 (-26d) | 10d → 15d | 8, 18 → none |
| 22 | L-R + STDP | 2023-09-20 → 2023-08-15 (-36d) | 2023-09-26 → 2023-08-21 (-36d) |  | 8, Testing BS projections → 8 |
| 23 | Testing L-R | 2023-09-27 → 2023-08-22 (-36d) | 2023-10-03 → 2023-08-28 (-36d) |  |  |
| 24 | Tested CPG + STDP | 2023-10-04 → 2023-08-29 (-36d) | 2023-10-04 → 2023-08-29 (-36d) |  |  |
