# mem spinal cord project

How a schedule from GanttProject changed from version to version. A marks actual dates.

## Version 1 (saved 2023-11-27)

Note of the change: added rainy

| ID | WBS | Task | Duration | Start | Finish | Predecessors | Complete |
| --- | --- | --- | --- | --- | --- | --- | --- |
| 1 | 1 | **B-model develpment** | 37d | 2023-11-27 | 2024-01-18 |  | 2% |
| 2 |  | Ia STDP fix | 10d | 2023-11-27 | 2023-12-08 |  | 10% |
| 3 |  | Cut STDP fix | 5d | 2023-12-11 | 2023-12-15 | 2 |  |
| 4 |  | BS->F STDP | 2d | 2023-12-18 | 2023-12-19 | 3 |  |
| 5 |  | BS->E STDP | 1d | 2023-12-20 | 2023-12-20 | 4 |  |
| 6 |  | Add 2nd leg | 1d | 2023-12-21 | 2023-12-21 | 3, 4, 5 |  |
| 7 |  | Commisural projections | 1d | 2023-12-22 | 2023-12-22 | 6 |  |
| 8 |  | Balance legs | 2d | 2023-12-25 | 2023-12-26 | 7 |  |
| 9 |  | Debug 2 legs | 5d | 2023-12-27 | 2024-01-04 | 8 |  |
| 10 |  | Debug STDP complete model | 10d | 2024-01-05 | 2024-01-18 | 9 |  |
| 11 |  | Complete B-model | 0d | 2024-01-19 | 2024-01-19 | 10 |  |
| 12 | 2 | **Memristors** | 57d | 2023-11-27 | 2024-02-19 |  |  |
| 13 |  | 1 memristor | 2d | 2023-11-27 | 2023-11-28 |  |  |
| 14 |  | 1 memristor test | 5d | 2023-11-29 | 2023-12-05 | 13 |  |
| 15 |  | 8 mem fubrication (E) | 5d | 2023-12-06 | 2023-12-12 | 14 |  |
| 16 |  | 8 mem test (E) | 10d | 2023-12-13 | 2023-12-26 | 15 |  |
| 17 |  | + 12 mem fubrication | 5d | 2023-12-27 | 2024-01-04 | 16 |  |
| 18 |  | 20 mem test (F+E) | 10d | 2024-01-05 | 2024-01-18 | 17 |  |
| 19 |  | 40 mems fubrication | 5d | 2024-01-19 | 2024-01-25 | 18 |  |
| 20 |  | 40 mems test | 15d | 2024-01-26 | 2024-02-19 | 19 |  |
| 21 |  | 40 mems (2 legs) | 0d | 2024-02-20 | 2024-02-20 | 20 |  |
| 22 | 3 | **Mem neurons** | 67d | 2023-11-27 | 2024-03-04 |  |  |
| 23 |  | negotiate parameters of mem neurons | 2d | 2023-11-27 | 2023-11-28 |  |  |
| 24 |  | Rework mem neuron sch | 10d | 2023-11-29 | 2023-12-12 | 23 |  |
| 25 |  | Design E neurons | 5d | 2023-12-13 | 2023-12-19 | 24 |  |
| 26 |  | Design F neurons | 5d | 2023-12-20 | 2023-12-26 | 25 |  |
| 27 |  | Design InE, InF | 5d | 2023-12-27 | 2024-01-04 | 26 |  |
| 28 |  | Design 2nd leg | 10d | 2024-01-05 | 2024-01-18 | 27 |  |
| 29 |  | Order PCBs | 5d | 2024-01-19 | 2024-01-25 | 28 |  |
| 30 |  | Deliver PCBs | 10d | 2024-01-26 | 2024-02-08 | 29 |  |
| 31 |  | Assemble PCBs | 15d | 2024-02-09 | 2024-03-04 | 29, 30 |  |
| 32 |  | Completed mem neurons | 0d | 2024-03-05 | 2024-03-05 | 31 |  |
| 33 | 4 | **Neurons+mems integration** | 34d | 2024-03-05 | 2024-04-19 | 22 |  |
| 34 |  | deliver mem neurons | 10d | 2024-03-05 | 2024-03-18 |  |  |
| 35 |  | integrate 1 neuron 1 mem | 3d | 2024-03-19 | 2024-03-21 | 34 |  |
| 36 |  | integrate 1 RG | 5d | 2024-03-22 | 2024-03-28 | 35 |  |
| 37 |  | test integrated RG | 5d | 2024-03-29 | 2024-04-04 | 36 |  |
| 38 |  | integrate 1 leg | 3d | 2024-04-05 | 2024-04-09 | 37 |  |
| 39 |  | test 1 leg | 2d | 2024-04-10 | 2024-04-11 | 38 |  |
| 40 |  | integrate 2 legs | 3d | 2024-04-12 | 2024-04-16 | 39 |  |
| 41 |  | test 2 legs | 3d | 2024-04-17 | 2024-04-19 | 40 |  |
| 42 |  | integrated 2 legs | 0d | 2024-04-22 | 2024-04-22 | 41 |  |
| 43 | 5 | **Rat validation** | 16d | 2024-04-22 | 2024-05-15 | 33 |  |
| 44 |  | deliver mem cpg | 10d | 2024-04-22 | 2024-05-07 |  |  |
| 45 |  | test mem cpg | 3d | 2024-05-08 | 2024-05-10 | 44 |  |
| 46 |  | integrate outs (F+E) | 1d | 2024-05-13 | 2024-05-13 | 45 |  |
| 47 |  | validate outs on rat | 2d | 2024-05-14 | 2024-05-15 | 46 |  |
| 48 |  | validated mem cpg | 0d | 2024-05-16 | 2024-05-16 | 47 |  |

## Version 2 (saved 2023-11-27)

Note of the change: added risk

Last finish 2024-05-16 → 2024-08-06 (+82d).

Changed:

| ID | Task | Start | Finish | Duration | Predecessors | Other |
| --- | --- | --- | --- | --- | --- | --- |
| 1 | **B-model develpment** |  | 2024-01-18 → 2024-02-09 (+22d) | 37d → 53d |  | baseline start none → 2023-11-27; baseline finish none → 2024-02-09 |
| 2 | Ia STDP fix |  | 2023-12-08 → 2023-12-15 (+7d) | 10d → 15d |  | baseline start none → 2023-11-27; baseline finish none → 2023-12-15 |
| 3 | Cut STDP fix | 2023-12-11 → 2023-12-18 (+7d) | 2023-12-15 → 2023-12-26 (+11d) | 5d → 7d |  | baseline start none → 2023-12-18; baseline finish none → 2023-12-26 |
| 4 | BS->F STDP | 2023-12-18 → 2023-12-27 (+9d) | 2023-12-19 → 2023-12-29 (+10d) | 2d → 3d |  | baseline start none → 2023-12-27; baseline finish none → 2023-12-29 |
| 5 | BS->E STDP | 2023-12-20 → 2024-01-03 (+14d) | 2023-12-20 → 2024-01-04 (+15d) | 1d → 2d |  | baseline start none → 2024-01-03; baseline finish none → 2024-01-04 |
| 6 | Add 2nd leg | 2023-12-21 → 2024-01-05 (+15d) | 2023-12-21 → 2024-01-08 (+18d) | 1d → 2d |  | baseline start none → 2024-01-05; baseline finish none → 2024-01-08 |
| 7 | Commisural projections | 2023-12-22 → 2024-01-09 (+18d) | 2023-12-22 → 2024-01-10 (+19d) | 1d → 2d |  | baseline start none → 2024-01-09; baseline finish none → 2024-01-10 |
| 8 | Balance legs | 2023-12-25 → 2024-01-11 (+17d) | 2023-12-26 → 2024-01-12 (+17d) |  |  | baseline start none → 2024-01-11; baseline finish none → 2024-01-12 |
| 9 | Debug 2 legs | 2023-12-27 → 2024-01-15 (+19d) | 2024-01-04 → 2024-01-26 (+22d) | 5d → 10d |  | baseline start none → 2024-01-15; baseline finish none → 2024-01-26 |
| 10 | Complete B-model | 2024-01-19 → 2024-02-12 (+24d) | 2024-01-19 → 2024-02-12 (+24d) |  |  | baseline start none → 2024-02-12; baseline finish none → 2024-02-12 |
| 11 | Debug STDP complete model | 2024-01-05 → 2024-01-29 (+24d) | 2024-01-18 → 2024-02-09 (+22d) |  |  | baseline start none → 2024-01-29; baseline finish none → 2024-02-09 |
| 12 | **Memristors** |  | 2024-02-19 → 2024-03-21 (+31d) | 57d → 80d |  | baseline start none → 2023-11-27; baseline finish none → 2024-03-21 |
| 13 | 1 memristor |  | 2023-11-28 → 2023-12-01 (+3d) | 2d → 5d |  | baseline start none → 2023-11-27; baseline finish none → 2023-12-01 |
| 14 | 1 memristor test | 2023-11-29 → 2023-12-04 (+5d) | 2023-12-05 → 2023-12-15 (+10d) | 5d → 10d |  | baseline start none → 2023-12-04; baseline finish none → 2023-12-15 |
| 15 | 8 mem fubrication (E) | 2023-12-06 → 2023-12-18 (+12d) | 2023-12-12 → 2023-12-29 (+17d) | 5d → 10d |  | baseline start none → 2023-12-18; baseline finish none → 2023-12-29 |
| 16 | 8 mem test (E) | 2023-12-13 → 2024-01-03 (+21d) | 2023-12-26 → 2024-01-16 (+21d) |  |  | baseline start none → 2024-01-03; baseline finish none → 2024-01-16 |
| 17 | + 12 mem fubrication | 2023-12-27 → 2024-01-17 (+21d) | 2024-01-04 → 2024-01-30 (+26d) | 5d → 10d |  | baseline start none → 2024-01-17; baseline finish none → 2024-01-30 |
| 18 | 20 mem test (F+E) | 2024-01-05 → 2024-01-31 (+26d) | 2024-01-18 → 2024-02-13 (+26d) |  |  | baseline start none → 2024-01-31; baseline finish none → 2024-02-13 |
| 19 | 40 mems fubrication | 2024-01-19 → 2024-02-14 (+26d) | 2024-01-25 → 2024-02-29 (+35d) | 5d → 10d |  | baseline start none → 2024-02-14; baseline finish none → 2024-02-29 |
| 20 | 40 mems test | 2024-01-26 → 2024-03-01 (+35d) | 2024-02-19 → 2024-03-21 (+31d) |  |  | baseline start none → 2024-03-01; baseline finish none → 2024-03-21 |
| 21 | 40 mems (2 legs) | 2024-02-20 → 2024-03-22 (+31d) | 2024-02-20 → 2024-03-22 (+31d) |  |  | baseline start none → 2024-03-22; baseline finish none → 2024-03-22 |
| 22 | **Mem neurons** |  | 2024-03-04 → 2024-03-25 (+21d) | 67d → 82d |  | baseline start none → 2023-11-27; baseline finish none → 2024-03-25 |
| 23 | negotiate parameters of mem neurons |  |  |  |  | baseline start none → 2023-11-27; baseline finish none → 2023-11-28 |
| 24 | Rework mem neuron sch |  |  |  |  | baseline start none → 2023-11-29; baseline finish none → 2023-12-12 |
| 25 | Design E neurons |  |  |  |  | baseline start none → 2023-12-13; baseline finish none → 2023-12-19 |
| 26 | Design F neurons |  |  |  |  | baseline start none → 2023-12-20; baseline finish none → 2023-12-26 |
| 27 | Design InE, InF |  |  |  |  | baseline start none → 2023-12-27; baseline finish none → 2024-01-04 |
| 28 | Design 2nd leg |  |  |  |  | baseline start none → 2024-01-05; baseline finish none → 2024-01-18 |
| 29 | Order PCBs |  | 2024-01-25 → 2024-02-01 (+7d) | 5d → 10d |  | baseline start none → 2024-01-19; baseline finish none → 2024-02-01 |
| 30 | Deliver PCBs | 2024-01-26 → 2024-02-02 (+7d) | 2024-02-08 → 2024-02-26 (+18d) | 10d → 15d |  | baseline start none → 2024-02-02; baseline finish none → 2024-02-26 |
| 31 | Assemble PCBs | 2024-02-09 → 2024-02-27 (+18d) | 2024-03-04 → 2024-03-25 (+21d) | 15d → 20d |  | baseline start none → 2024-02-27; baseline finish none → 2024-03-25 |
| 32 | Completed mem neurons | 2024-03-05 → 2024-03-26 (+21d) | 2024-03-05 → 2024-03-26 (+21d) |  |  | baseline start none → 2024-03-26; baseline finish none → 2024-03-26 |
| 33 | **Neurons+mems integration** | 2024-03-05 → 2024-03-26 (+21d) | 2024-04-19 → 2024-06-21 (+63d) | 34d → 62d | 22 → 1, 12, 22 | baseline start none → 2024-03-26; baseline finish none → 2024-06-21 |
| 34 | deliver mem neurons | 2024-03-05 → 2024-03-26 (+21d) | 2024-03-18 → 2024-04-22 (+35d) | 10d → 20d |  | baseline start none → 2024-03-26; baseline finish none → 2024-04-22 |
| 35 | integrate 1 neuron 1 mem | 2024-03-19 → 2024-04-23 (+35d) | 2024-03-21 → 2024-04-29 (+39d) | 3d → 5d |  | baseline start none → 2024-04-23; baseline finish none → 2024-04-29 |
| 36 | integrate 1 RG | 2024-03-22 → 2024-04-30 (+39d) | 2024-03-28 → 2024-05-15 (+48d) | 5d → 10d |  | baseline start none → 2024-04-30; baseline finish none → 2024-05-15 |
| 37 | test integrated RG | 2024-03-29 → 2024-05-16 (+48d) | 2024-04-04 → 2024-05-24 (+50d) | 5d → 7d |  | baseline start none → 2024-05-16; baseline finish none → 2024-05-24 |
| 38 | integrate 1 leg | 2024-04-05 → 2024-05-27 (+52d) | 2024-04-09 → 2024-05-31 (+52d) | 3d → 5d |  | baseline start none → 2024-05-27; baseline finish none → 2024-05-31 |
| 39 | test 1 leg | 2024-04-10 → 2024-06-03 (+54d) | 2024-04-11 → 2024-06-07 (+57d) | 2d → 5d |  | baseline start none → 2024-06-03; baseline finish none → 2024-06-07 |
| 40 | integrate 2 legs | 2024-04-12 → 2024-06-10 (+59d) | 2024-04-16 → 2024-06-14 (+59d) | 3d → 5d |  | baseline start none → 2024-06-10; baseline finish none → 2024-06-14 |
| 41 | test 2 legs | 2024-04-17 → 2024-06-17 (+61d) | 2024-04-19 → 2024-06-21 (+63d) | 3d → 5d |  | baseline start none → 2024-06-17; baseline finish none → 2024-06-21 |
| 42 | integrated 2 legs | 2024-04-22 → 2024-06-24 (+63d) | 2024-04-22 → 2024-06-24 (+63d) |  |  | baseline start none → 2024-06-24; baseline finish none → 2024-06-24 |
| 43 | **Rat validation** | 2024-04-22 → 2024-06-24 (+63d) | 2024-05-15 → 2024-08-05 (+82d) | 16d → 31d |  | baseline start none → 2024-06-24; baseline finish none → 2024-08-05 |
| 44 | deliver mem cpg | 2024-04-22 → 2024-06-24 (+63d) | 2024-05-07 → 2024-07-19 (+73d) | 10d → 20d |  | baseline start none → 2024-06-24; baseline finish none → 2024-07-19 |
| 45 | test mem cpg | 2024-05-08 → 2024-07-22 (+75d) | 2024-05-10 → 2024-07-26 (+77d) | 3d → 5d |  | baseline start none → 2024-07-22; baseline finish none → 2024-07-26 |
| 46 | integrate outs (F+E) | 2024-05-13 → 2024-07-29 (+77d) | 2024-05-13 → 2024-07-31 (+79d) | 1d → 3d |  | baseline start none → 2024-07-29; baseline finish none → 2024-07-31 |
| 47 | validate outs on rat | 2024-05-14 → 2024-08-01 (+79d) | 2024-05-15 → 2024-08-05 (+82d) | 2d → 3d |  | baseline start none → 2024-08-01; baseline finish none → 2024-08-05 |
| 48 | validated mem cpg | 2024-05-16 → 2024-08-06 (+82d) | 2024-05-16 → 2024-08-06 (+82d) |  |  | baseline start none → 2024-08-06; baseline finish none → 2024-08-06 |

## Version 3 (saved 2023-11-28)

Note of the change: updated sunny and rainy: confirmed model

Last finish 2024-08-06 → 2024-09-12 (+37d).

Added:

| ID | Task | Duration | Start | Finish | Predecessors |
| --- | --- | --- | --- | --- | --- |
| 32 | Redesign PCBs | 5d | 2024-03-26 | 2024-04-01 | 31 |
| 33 | Order 2nd PCBs | 10d | 2024-04-02 | 2024-04-15 | 32 |
| 34 | Assemble PCBs | 10d | 2024-04-16 | 2024-04-29 | 33 |

Changed:

| ID | Task | Start | Finish | Duration | Complete | Other |
| --- | --- | --- | --- | --- | --- | --- |
| 1 | **B-model develpment** |  |  |  | 2% → 4% |  |
| 2 | Ia STDP fix |  |  |  | 10% → 15% |  |
| 4 | Ia->F, E STDP |  |  |  |  | was named BS->F STDP |
| 5 | BS->F, E STDP |  |  |  |  | was named BS->E STDP |
| 22 | **Mem neurons** |  | 2024-03-25 → 2024-04-29 (+35d) | 82d → 107d |  |  |
| 23 | negotiate parameters of mem neurons |  |  |  | 0% → 20% |  |
| 29 | Order 1st PCBs |  |  |  |  | was named Order PCBs |
| 36 | **Neurons+mems integration** | 2024-03-26 → 2024-04-30 (+35d) | 2024-06-21 → 2024-07-26 (+35d) |  |  |  |
| 37 | deliver mem neurons | 2024-03-26 → 2024-04-30 (+35d) | 2024-04-22 → 2024-05-29 (+37d) |  |  |  |
| 38 | integrate 1 neuron 1 mem | 2024-04-23 → 2024-05-30 (+37d) | 2024-04-29 → 2024-06-05 (+37d) |  |  |  |
| 39 | integrate 1 RG | 2024-04-30 → 2024-06-06 (+37d) | 2024-05-15 → 2024-06-19 (+35d) |  |  |  |
| 40 | test integrated RG | 2024-05-16 → 2024-06-20 (+35d) | 2024-05-24 → 2024-06-28 (+35d) |  |  |  |
| 41 | integrate 1 leg | 2024-05-27 → 2024-07-01 (+35d) | 2024-05-31 → 2024-07-05 (+35d) |  |  |  |
| 42 | test 1 leg | 2024-06-03 → 2024-07-08 (+35d) | 2024-06-07 → 2024-07-12 (+35d) |  |  |  |
| 43 | integrate 2 legs | 2024-06-10 → 2024-07-15 (+35d) | 2024-06-14 → 2024-07-19 (+35d) |  |  |  |
| 44 | test 2 legs | 2024-06-17 → 2024-07-22 (+35d) | 2024-06-21 → 2024-07-26 (+35d) |  |  |  |
| 45 | integrated 2 legs | 2024-06-24 → 2024-07-29 (+35d) | 2024-06-24 → 2024-07-29 (+35d) |  |  |  |
| 46 | **Rat validation** | 2024-06-24 → 2024-07-29 (+35d) | 2024-08-05 → 2024-09-11 (+37d) | 31d → 33d |  |  |
| 47 | deliver mem cpg | 2024-06-24 → 2024-07-29 (+35d) | 2024-07-19 → 2024-08-23 (+35d) |  |  |  |
| 48 | test mem cpg | 2024-07-22 → 2024-08-26 (+35d) | 2024-07-26 → 2024-08-30 (+35d) |  |  |  |
| 49 | integrate outs (F+E) | 2024-07-29 → 2024-09-02 (+35d) | 2024-07-31 → 2024-09-04 (+35d) |  |  |  |
| 50 | validate outs on rat | 2024-08-01 → 2024-09-05 (+35d) | 2024-08-05 → 2024-09-11 (+37d) | 3d → 5d |  |  |
| 51 | validated mem cpg | 2024-08-06 → 2024-09-12 (+37d) | 2024-08-06 → 2024-09-12 (+37d) |  |  |  |

## Version 4 (saved 2023-12-01)

Note of the change: updated mem neuro pp

Last finish 2024-09-12 → 2024-10-04 (+22d).

Added:

| ID | Task | Duration | Start | Finish | Predecessors |
| --- | --- | --- | --- | --- | --- |
| 29 | Simulation | 2d | 2024-02-01 | 2024-02-02 | 28 |
| 36 | Test 2nd PCBs | 5d | 2024-05-17 | 2024-05-23 | 35 |

Changed:

| ID | Task | Start | Finish | Duration | Predecessors | Other |
| --- | --- | --- | --- | --- | --- | --- |
| 22 | **Mem neurons** | 2023-11-27 → 2023-12-04 (+7d) | 2024-04-29 → 2024-05-23 (+24d) | 107d → 118d |  |  |
| 23 | negotiate parameters of mem neurons | 2023-11-27 → 2023-12-04 (+7d) | 2023-11-28 → 2023-12-05 (+7d) |  |  |  |
| 24 | Rework mem neuron sch | 2023-11-29 → 2023-12-06 (+7d) | 2023-12-12 → 2023-12-19 (+7d) |  |  |  |
| 25 | Design PCB E neurons | 2023-12-13 → 2023-12-20 (+7d) | 2023-12-19 → 2023-12-28 (+9d) | 5d → 7d |  | was named Design E neurons |
| 26 | Design PCB F neurons | 2023-12-20 → 2023-12-29 (+9d) | 2023-12-26 → 2024-01-10 (+15d) | 5d → 7d |  | was named Design F neurons |
| 27 | Design InE, InF | 2023-12-27 → 2024-01-11 (+15d) | 2024-01-04 → 2024-01-17 (+13d) |  |  |  |
| 28 | Design 2nd leg | 2024-01-05 → 2024-01-18 (+13d) | 2024-01-18 → 2024-01-31 (+13d) |  |  |  |
| 30 | Order 1st PCBs | 2024-01-19 → 2024-02-05 (+17d) | 2024-02-01 → 2024-02-20 (+19d) |  | 28 → 28, 29 |  |
| 31 | Deliver PCBs | 2024-02-02 → 2024-02-21 (+19d) | 2024-02-26 → 2024-03-12 (+15d) |  |  |  |
| 32 | Assemble PCBs | 2024-02-27 → 2024-03-13 (+15d) | 2024-03-25 → 2024-04-09 (+15d) |  |  |  |
| 33 | Redesign PCBs | 2024-03-26 → 2024-04-10 (+15d) | 2024-04-01 → 2024-04-16 (+15d) |  |  |  |
| 34 | Order 2nd PCBs | 2024-04-02 → 2024-04-17 (+15d) | 2024-04-15 → 2024-04-30 (+15d) |  |  |  |
| 35 | Assemble 2nd PCBs | 2024-04-16 → 2024-05-03 (+17d) | 2024-04-29 → 2024-05-16 (+17d) |  |  | was named Assemble PCBs |
| 37 | Completed mem neurons | 2024-03-26 → 2024-05-24 (+59d) | 2024-03-26 → 2024-05-24 (+59d) |  | 32 → 32, 35, 36 |  |
| 38 | **Neurons+mems integration** | 2024-04-30 → 2024-05-24 (+24d) | 2024-07-26 → 2024-08-19 (+24d) |  |  |  |
| 39 | deliver mem neurons | 2024-04-30 → 2024-05-24 (+24d) | 2024-05-29 → 2024-06-20 (+22d) |  |  |  |
| 40 | integrate 1 neuron 1 mem | 2024-05-30 → 2024-06-21 (+22d) | 2024-06-05 → 2024-06-27 (+22d) |  |  |  |
| 41 | integrate 1 RG | 2024-06-06 → 2024-06-28 (+22d) | 2024-06-19 → 2024-07-11 (+22d) |  |  |  |
| 42 | test integrated RG | 2024-06-20 → 2024-07-12 (+22d) | 2024-06-28 → 2024-07-22 (+24d) |  |  |  |
| 43 | integrate 1 leg | 2024-07-01 → 2024-07-23 (+22d) | 2024-07-05 → 2024-07-29 (+24d) |  |  |  |
| 44 | test 1 leg | 2024-07-08 → 2024-07-30 (+22d) | 2024-07-12 → 2024-08-05 (+24d) |  |  |  |
| 45 | integrate 2 legs | 2024-07-15 → 2024-08-06 (+22d) | 2024-07-19 → 2024-08-12 (+24d) |  |  |  |
| 46 | test 2 legs | 2024-07-22 → 2024-08-13 (+22d) | 2024-07-26 → 2024-08-19 (+24d) |  |  |  |
| 47 | integrated 2 legs | 2024-07-29 → 2024-08-20 (+22d) | 2024-07-29 → 2024-08-20 (+22d) |  |  |  |
| 48 | **Rat validation** | 2024-07-29 → 2024-08-20 (+22d) | 2024-09-11 → 2024-10-03 (+22d) |  |  |  |
| 49 | deliver mem cpg | 2024-07-29 → 2024-08-20 (+22d) | 2024-08-23 → 2024-09-16 (+24d) |  |  |  |
| 50 | test mem cpg | 2024-08-26 → 2024-09-17 (+22d) | 2024-08-30 → 2024-09-23 (+24d) |  |  |  |
| 51 | integrate outs (F+E) | 2024-09-02 → 2024-09-24 (+22d) | 2024-09-04 → 2024-09-26 (+22d) |  |  |  |
| 52 | validate outs on rat | 2024-09-05 → 2024-09-27 (+22d) | 2024-09-11 → 2024-10-03 (+22d) |  |  |  |
| 53 | validated mem cpg | 2024-09-12 → 2024-10-04 (+22d) | 2024-09-12 → 2024-10-04 (+22d) |  |  |  |

## Version 5 (saved 2023-12-01)

Note of the change: updated rainy gantt chart

Last finish 2024-10-04 → 2024-10-31 (+27d). Complete tasks 0 → 1.

Added:

| ID | Task | Duration | Start | Finish | Predecessors |
| --- | --- | --- | --- | --- | --- |
| 7 | Commisural Projections | 2d | 2024-01-11 | 2024-01-12 | 6 |
| 8 | Balance 2 legs | 2d | 2024-01-15 | 2024-01-16 | 7 |
| 18 | fubricate + 12 mems | 10d | 2024-02-09 | 2024-02-26 | 17 |
| 19 | 20 mems test F+E | 10d | 2024-02-27 | 2024-03-11 | 18 |
| 21 | test 40 mems | 15d | 2024-03-26 | 2024-04-15 | 20 |
| 37 | Solder 2nd PCBs | 10d | 2024-05-27 | 2024-06-07 | 36 |
| 39 | Mem neurons | 0d | 2024-06-17 | 2024-06-17 | 38 |
| 50 | integrated mem CPG | 0d | 2024-09-16 | 2024-09-16 | 49 |
| 52 | deliver mem CPG | 20d | 2024-09-16 | 2024-10-11 |  |
| 53 | test mem CPG | 5d | 2024-10-14 | 2024-10-18 | 52 |
| 54 | integrate outs F+E | 3d | 2024-10-21 | 2024-10-23 | 53 |
| 56 | validated mem CPG | 0d | 2024-10-31 | 2024-10-31 | 55 |

Removed: 6 Add 2nd leg; 7 Commisural projections; 12 Memristors; 23 negotiate parameters of mem neurons; 28 Design 2nd leg; 31 Deliver PCBs; 35 Assemble 2nd PCBs; 47 integrated 2 legs; 53 validated mem cpg

Changed:

| ID | Task | Start | Finish | Duration | Complete | Predecessors | Other |
| --- | --- | --- | --- | --- | --- | --- | --- |
| 1 | **B-model** | 2023-11-27 → 2023-12-01 (+4d) | 2024-02-09 → 2024-02-13 (+4d) | 53d → 51d | 4% → 6% |  | was named B-model develpment; baseline start 2023-11-27 → 2023-12-01; baseline finish 2024-02-09 → 2024-02-19 |
| 2 | Ia STDP fix | 2023-11-27 → 2023-12-01 (+4d) | 2023-12-15 → 2023-12-21 (+6d) |  | 15% → 20% |  | baseline start 2023-11-27 → 2023-12-01; baseline finish 2023-12-15 → 2023-12-21 |
| 3 | Ia->F, E STDP | 2023-12-27 → 2023-12-22 (-5d) | 2023-12-29 → 2023-12-26 (-3d) |  | 0% → 10% | 5 → 2 | baseline start 2023-12-27 → 2024-01-02; baseline finish 2023-12-29 → 2024-01-05 |
| 4 | BS->F, E STDP | 2024-01-03 → 2023-12-22 (-12d) | 2024-01-04 → 2023-12-25 (-10d) |  | 0% → 10% | 3 → 2 | baseline start 2024-01-03 → 2024-01-05; baseline finish 2024-01-04 → 2024-01-08 |
| 5 | Cut STDP fix | 2023-12-18 → 2023-12-27 (+9d) | 2023-12-26 → 2024-01-08 (+13d) |  |  | 2 → 3, 4 | baseline start 2023-12-18 → 2023-12-22; baseline finish 2023-12-26 → 2024-01-03 |
| 6 | + 2nd leg | 2024-01-11 → 2024-01-09 (-2d) | 2024-01-12 → 2024-01-10 (-2d) |  |  | Commisural projections → 4, 5 | was named Balance legs; baseline start 2024-01-11 → 2024-01-09; baseline finish 2024-01-12 → 2024-01-10 |
| 9 | Debug 2 legs | 2024-01-15 → 2024-01-17 (+2d) | 2024-01-26 → 2024-01-30 (+4d) |  |  | 6 → 8 | baseline start 2024-01-15 → 2024-01-17; baseline finish 2024-01-26 → 2024-01-30 |
| 10 | Debug STDP complete model | 2024-01-29 → 2024-01-31 (+2d) | 2024-02-09 → 2024-02-13 (+4d) |  |  |  | baseline start 2024-01-29 → 2024-01-31; baseline finish 2024-02-09 → 2024-02-13 |
| 11 | Complete B-model | 2024-02-12 → 2024-02-14 (+2d) | 2024-02-12 → 2024-02-14 (+2d) |  |  |  | baseline start 2024-02-12 → 2024-02-14; baseline finish 2024-02-12 → 2024-02-14 |
| 12 | **Memristive devices** | 2023-12-18 → 2023-12-06 (-12d) | 2023-12-29 → 2024-04-15 (+108d) | 10d → 90d |  | 25 → none | was named 8 mem fubrication (E); baseline start 2023-12-18 → none; baseline finish 2023-12-29 → none |
| 13 | buy silver | 2024-01-17 → 2023-12-06 (-42d) | 2024-01-30 → 2023-12-19 (-42d) |  |  | 14 → none | was named + 12 mem fubrication; baseline start 2024-01-17 → none; baseline finish 2024-01-30 → none |
| 14 | fabricate 1 mem | 2024-01-03 → 2023-12-20 (-14d) | 2024-01-16 → 2023-12-26 (-21d) | 10d → 5d |  | 12 → 13 | was named 8 mem test (E); baseline start 2024-01-03 → none; baseline finish 2024-01-16 → none |
| 15 | test 1 mem | 2024-01-31 → 2023-12-27 (-35d) | 2024-02-13 → 2024-01-11 (-33d) |  |  | 13 → 14 | was named 20 mem test (F+E); baseline start 2024-01-31 → none; baseline finish 2024-02-13 → none |
| 16 | fabricate 8 mem E | 2024-02-14 → 2024-01-12 (-33d) | 2024-02-29 → 2024-01-25 (-35d) |  |  |  | was named 40 mems fubrication; baseline start 2024-02-14 → none; baseline finish 2024-02-29 → none |
| 17 | test 8 mem E | 2024-03-01 → 2024-01-26 (-35d) | 2024-03-21 → 2024-02-08 (-42d) | 15d → 10d |  |  | was named 40 mems test; baseline start 2024-03-01 → none; baseline finish 2024-03-21 → none |
| 20 | fubricate 40 mems | 2023-12-06 → 2024-03-12 (+97d) | 2023-12-19 → 2024-03-25 (+97d) |  |  | negotiate parameters of mem neurons → 19 | was named Rework mem neuron sch; baseline start 2023-11-29 → none; baseline finish 2023-12-12 → none |
| 22 | 40 mems (2 legs) | 2024-03-22 → 2024-04-16 (+25d) | 2024-03-22 → 2024-04-16 (+25d) |  |  | 17 → 21 | baseline start 2024-03-22 → none; baseline finish 2024-03-22 → none |
| 23 | **Mem neurons** | 2023-12-04 → 2023-12-01 (-3d) | 2024-05-23 → 2024-06-14 (+22d) | 118d → 135d |  |  | baseline start 2023-11-27 → none; baseline finish 2024-03-25 → none |
| 24 | negotiate mem 1 parameters | 2023-11-27 → 2023-12-01 (+4d) |  | 5d → 1d | 0% → 100% |  | was named 1 memristor; baseline start 2023-11-27 → none; baseline finish 2023-12-01 → none |
| 25 | negotiate mem 2 parameters | 2023-12-04 → 2023-12-27 (+23d) | 2023-12-15 → 2023-12-27 (+12d) | 10d → 1d |  | 24 → 14, 24 | was named 1 memristor test; baseline start 2023-12-04 → none; baseline finish 2023-12-15 → none |
| 26 | Rework mem neurons schematic | 2024-01-11 → 2023-12-28 (-14d) | 2024-01-17 → 2024-01-12 (-5d) | 5d → 10d |  | 28 → 25 | was named Design InE, InF; baseline start 2023-12-27 → none; baseline finish 2024-01-04 → none |
| 27 | Design PCB E neurons | 2023-12-20 → 2024-01-15 (+26d) | 2023-12-28 → 2024-01-23 (+26d) |  |  | 20 → 26 | baseline start 2023-12-13 → none; baseline finish 2023-12-19 → none |
| 28 | Design PCB F neurons | 2023-12-29 → 2024-01-24 (+26d) | 2024-01-10 → 2024-02-01 (+22d) |  |  |  | baseline start 2023-12-20 → none; baseline finish 2023-12-26 → none |
| 29 | Design PCB InE, InF | 2024-03-13 → 2024-02-02 (-40d) | 2024-04-09 → 2024-02-08 (-61d) | 20d → 5d |  | 32, Deliver PCBs → 28 | was named Assemble PCBs; baseline start 2024-02-27 → none; baseline finish 2024-03-25 → none |
| 30 | Design PCB 2nd leg | 2024-05-24 → 2024-02-09 (-105d) | 2024-05-24 → 2024-02-26 (-88d) | 0d → 10d |  | 29, Assemble 2nd PCBs, 38 → 29 | was named Completed mem neurons; baseline start 2024-03-26 → none; baseline finish 2024-03-26 → none |
| 31 | Simulation | 2024-02-01 → 2024-02-27 (+26d) | 2024-02-02 → 2024-02-28 (+26d) |  |  | Design 2nd leg → 30 |  |
| 32 | Order 1st PCBs | 2024-02-05 → 2024-02-29 (+24d) | 2024-02-20 → 2024-03-13 (+22d) |  |  | Design 2nd leg, 31 → 31 | baseline start 2024-01-19 → none; baseline finish 2024-02-01 → none |
| 33 | Delivery 1st PCBs | 2024-06-21 → 2024-03-14 (-99d) | 2024-06-27 → 2024-04-03 (-85d) | 5d → 15d |  | 41 → 32 | was named integrate 1 neuron 1 mem; baseline start 2024-04-23 → none; baseline finish 2024-04-29 → none |
| 34 | Solder 1st PCBs | 2024-06-28 → 2024-04-04 (-85d) | 2024-07-11 → 2024-05-03 (-69d) | 10d → 20d |  |  | was named integrate 1 RG; baseline start 2024-04-30 → none; baseline finish 2024-05-15 → none |
| 35 | Redesign PCBs | 2024-04-10 → 2024-05-06 (+26d) | 2024-04-16 → 2024-05-10 (+24d) |  |  | 29 → 34 |  |
| 36 | Order 2nd PCBs | 2024-04-17 → 2024-05-13 (+26d) | 2024-04-30 → 2024-05-24 (+24d) |  |  |  |  |
| 38 | Test 2nd PCBs | 2024-05-17 → 2024-06-10 (+24d) | 2024-05-23 → 2024-06-14 (+22d) |  |  | Assemble 2nd PCBs → 37 |  |
| 40 | **Neurons+mems integration** | 2024-05-24 → 2024-06-17 (+24d) | 2024-08-19 → 2024-09-13 (+25d) | 62d → 65d |  | 1, Memristors, 23 → 1, 12, 23 | baseline start 2024-03-26 → none; baseline finish 2024-06-21 → none |
| 41 | deliver mem neurons | 2024-05-24 → 2024-06-17 (+24d) | 2024-06-20 → 2024-07-12 (+22d) |  |  |  | baseline start 2024-03-26 → none; baseline finish 2024-04-22 → none |
| 42 | integrate 1 neuron + 1 mem | 2024-08-20 → 2024-07-15 (-36d) | 2024-09-16 → 2024-07-19 (-59d) | 20d → 5d |  | none → 41 | was named deliver mem cpg; baseline start 2024-06-24 → none; baseline finish 2024-07-19 → none |
| 43 | test integration 1n + 1m | 2024-09-17 → 2024-07-22 (-57d) | 2024-09-23 → 2024-07-26 (-59d) |  |  |  | was named test mem cpg; baseline start 2024-07-22 → none; baseline finish 2024-07-26 → none |
| 44 | integrate 1 RG 4 neurons | 2024-09-24 → 2024-07-29 (-57d) | 2024-09-26 → 2024-08-02 (-55d) | 3d → 5d |  |  | was named integrate outs (F+E); baseline start 2024-07-29 → none; baseline finish 2024-07-31 → none |
| 45 | test integrated RG | 2024-07-12 → 2024-08-05 (+24d) | 2024-07-22 → 2024-08-16 (+25d) | 7d → 10d |  | 34 → 44 | baseline start 2024-05-16 → none; baseline finish 2024-05-24 → none |
| 46 | integrate 1 leg | 2024-07-23 → 2024-08-19 (+27d) | 2024-07-29 → 2024-08-23 (+25d) |  |  |  | baseline start 2024-05-27 → none; baseline finish 2024-05-31 → none |
| 47 | test 1 leg | 2024-07-30 → 2024-08-26 (+27d) | 2024-08-05 → 2024-08-30 (+25d) |  |  |  | baseline start 2024-06-03 → none; baseline finish 2024-06-07 → none |
| 48 | integrate 2 legs | 2024-08-06 → 2024-09-02 (+27d) | 2024-08-12 → 2024-09-06 (+25d) |  |  |  | baseline start 2024-06-10 → none; baseline finish 2024-06-14 → none |
| 49 | test 2 legs | 2024-08-13 → 2024-09-09 (+27d) | 2024-08-19 → 2024-09-13 (+25d) |  |  |  | baseline start 2024-06-17 → none; baseline finish 2024-06-21 → none |
| 51 | **Rat validation** | 2024-08-20 → 2024-09-16 (+27d) | 2024-10-03 → 2024-10-30 (+27d) |  |  |  | baseline start 2024-06-24 → none; baseline finish 2024-08-05 → none |
| 55 | validate outs on rat | 2024-09-27 → 2024-10-24 (+27d) | 2024-10-03 → 2024-10-30 (+27d) |  |  | 44 → 54 | baseline start 2024-08-01 → none; baseline finish 2024-08-05 → none |

## Version 6 (saved 2023-12-04)

Note of the change: added memCPG gantt simplified

Last finish stays 2024-10-31.

Changed:

| ID | Task | Complete |
| --- | --- | --- |
| 1 | **B-model** | 6% → 9% |
| 2 | Ia STDP fix | 20% → 30% |
| 5 | Cut STDP fix | 0% → 1% |
| 13 | buy silver | 0% → 1% |
| 26 | Rework mem neurons schematic | 0% → 1% |

## Version 7 (saved 2023-12-10)

Note of the change: updated pp: + test tasks

Last finish 2024-10-31 → 2024-11-18 (+18d).

Added:

| ID | Task | Duration | Start | Finish | Predecessors |
| --- | --- | --- | --- | --- | --- |
| 25 | test task | 10d | 2023-12-04 | 2023-12-15 | 24 |

Changed:

| ID | Task | Start | Finish | Complete | Predecessors | Other |
| --- | --- | --- | --- | --- | --- | --- |
| 1 | **B-model** |  | 2024-02-13 → 2024-03-01 (+17d) | 9% → 12% |  | baseline finish 2024-02-19 → 2024-03-05 |
| 2 | Ia STDP fix |  | 2023-12-21 → 2024-01-09 (+19d) | 30% → 40% |  | baseline finish 2023-12-21 → 2024-01-09 |
| 3 | Ia->F, E STDP | 2023-12-22 → 2024-01-10 (+19d) | 2023-12-26 → 2024-01-12 (+17d) |  |  | baseline finish 2024-01-05 → 2024-01-10 |
| 4 | BS->F, E STDP | 2023-12-22 → 2024-01-10 (+19d) | 2023-12-25 → 2024-01-11 (+17d) |  |  | baseline finish 2024-01-08 → 2024-01-09 |
| 5 | Cut STDP fix | 2023-12-27 → 2024-01-15 (+19d) | 2024-01-08 → 2024-01-23 (+15d) |  |  | baseline finish 2024-01-03 → 2024-01-16 |
| 6 | + 2nd leg | 2024-01-09 → 2024-01-24 (+15d) | 2024-01-10 → 2024-01-25 (+15d) |  |  |  |
| 7 | Commisural Projections | 2024-01-11 → 2024-01-26 (+15d) | 2024-01-12 → 2024-01-29 (+17d) |  |  |  |
| 8 | Balance 2 legs | 2024-01-15 → 2024-01-30 (+15d) | 2024-01-16 → 2024-01-31 (+15d) |  |  |  |
| 9 | Debug 2 legs | 2024-01-17 → 2024-02-01 (+15d) | 2024-01-30 → 2024-02-14 (+15d) |  |  |  |
| 10 | Debug STDP complete model | 2024-01-31 → 2024-02-19 (+19d) | 2024-02-13 → 2024-03-01 (+17d) |  |  |  |
| 11 | Complete B-model | 2024-02-14 → 2024-03-04 (+19d) | 2024-02-14 → 2024-03-04 (+19d) |  |  |  |
| 12 | **Memristive devices** |  | 2024-04-15 → 2024-04-30 (+15d) | 0% → 1% |  |  |
| 13 | buy silver |  |  | 1% → 10% |  |  |
| 14 | fabricate 1 mem | 2023-12-20 → 2024-01-08 (+19d) | 2023-12-26 → 2024-01-12 (+17d) |  |  |  |
| 15 | test 1 mem | 2023-12-27 → 2024-01-15 (+19d) | 2024-01-11 → 2024-01-26 (+15d) |  |  |  |
| 16 | fabricate 8 mem E | 2024-01-12 → 2024-01-29 (+17d) | 2024-01-25 → 2024-02-09 (+15d) |  |  |  |
| 17 | test 8 mem E | 2024-01-26 → 2024-02-12 (+17d) | 2024-02-08 → 2024-02-27 (+19d) |  |  |  |
| 18 | fubricate + 12 mems | 2024-02-09 → 2024-02-28 (+19d) | 2024-02-26 → 2024-03-12 (+15d) |  |  |  |
| 19 | 20 mems test F+E | 2024-02-27 → 2024-03-13 (+15d) | 2024-03-11 → 2024-03-26 (+15d) |  |  |  |
| 20 | fubricate 40 mems | 2024-03-12 → 2024-03-27 (+15d) | 2024-03-25 → 2024-04-09 (+15d) |  |  |  |
| 21 | test 40 mems | 2024-03-26 → 2024-04-10 (+15d) | 2024-04-15 → 2024-04-30 (+15d) |  |  |  |
| 22 | 40 mems (2 legs) | 2024-04-16 → 2024-05-03 (+17d) | 2024-04-16 → 2024-05-03 (+17d) |  |  |  |
| 23 | **Mem neurons** |  | 2024-06-14 → 2024-07-01 (+17d) |  |  |  |
| 26 | negotiate mem 2 parameters | 2023-12-27 → 2024-01-15 (+19d) | 2023-12-27 → 2024-01-15 (+19d) |  | 14, 24 → 14, 24, 25 |  |
| 27 | Rework mem neurons schematic | 2023-12-28 → 2024-01-16 (+19d) | 2024-01-12 → 2024-01-29 (+17d) |  |  |  |
| 28 | Design PCB E neurons | 2024-01-15 → 2024-01-30 (+15d) | 2024-01-23 → 2024-02-07 (+15d) |  |  |  |
| 29 | Design PCB F neurons | 2024-01-24 → 2024-02-08 (+15d) | 2024-02-01 → 2024-02-20 (+19d) |  |  |  |
| 30 | Design PCB InE, InF | 2024-02-02 → 2024-02-21 (+19d) | 2024-02-08 → 2024-02-27 (+19d) |  |  |  |
| 31 | Design PCB 2nd leg | 2024-02-09 → 2024-02-28 (+19d) | 2024-02-26 → 2024-03-12 (+15d) |  |  |  |
| 32 | Simulation | 2024-02-27 → 2024-03-13 (+15d) | 2024-02-28 → 2024-03-14 (+15d) |  |  |  |
| 33 | Order 1st PCBs | 2024-02-29 → 2024-03-15 (+15d) | 2024-03-13 → 2024-03-28 (+15d) |  |  |  |
| 34 | Delivery 1st PCBs | 2024-03-14 → 2024-03-29 (+15d) | 2024-04-03 → 2024-04-18 (+15d) |  |  |  |
| 35 | Solder 1st PCBs | 2024-04-04 → 2024-04-19 (+15d) | 2024-05-03 → 2024-05-20 (+17d) |  |  |  |
| 36 | Redesign PCBs | 2024-05-06 → 2024-05-21 (+15d) | 2024-05-10 → 2024-05-27 (+17d) |  |  |  |
| 37 | Order 2nd PCBs | 2024-05-13 → 2024-05-28 (+15d) | 2024-05-24 → 2024-06-10 (+17d) |  |  |  |
| 38 | Solder 2nd PCBs | 2024-05-27 → 2024-06-11 (+15d) | 2024-06-07 → 2024-06-24 (+17d) |  |  |  |
| 39 | Test 2nd PCBs | 2024-06-10 → 2024-06-25 (+15d) | 2024-06-14 → 2024-07-01 (+17d) |  |  |  |
| 40 | Mem neurons | 2024-06-17 → 2024-07-02 (+15d) | 2024-06-17 → 2024-07-02 (+15d) |  |  |  |
| 41 | **Neurons+mems integration** | 2024-06-17 → 2024-07-02 (+15d) | 2024-09-13 → 2024-09-30 (+17d) |  |  |  |
| 42 | deliver mem neurons | 2024-06-17 → 2024-07-02 (+15d) | 2024-07-12 → 2024-07-29 (+17d) |  |  |  |
| 43 | integrate 1 neuron + 1 mem | 2024-07-15 → 2024-07-30 (+15d) | 2024-07-19 → 2024-08-05 (+17d) |  |  |  |
| 44 | test integration 1n + 1m | 2024-07-22 → 2024-08-06 (+15d) | 2024-07-26 → 2024-08-12 (+17d) |  |  |  |
| 45 | integrate 1 RG 4 neurons | 2024-07-29 → 2024-08-13 (+15d) | 2024-08-02 → 2024-08-19 (+17d) |  |  |  |
| 46 | test integrated RG | 2024-08-05 → 2024-08-20 (+15d) | 2024-08-16 → 2024-09-02 (+17d) |  |  |  |
| 47 | integrate 1 leg | 2024-08-19 → 2024-09-03 (+15d) | 2024-08-23 → 2024-09-09 (+17d) |  |  |  |
| 48 | test 1 leg | 2024-08-26 → 2024-09-10 (+15d) | 2024-08-30 → 2024-09-16 (+17d) |  |  |  |
| 49 | integrate 2 legs | 2024-09-02 → 2024-09-17 (+15d) | 2024-09-06 → 2024-09-23 (+17d) |  |  |  |
| 50 | test 2 legs | 2024-09-09 → 2024-09-24 (+15d) | 2024-09-13 → 2024-09-30 (+17d) |  |  |  |
| 51 | integrated mem CPG | 2024-09-16 → 2024-10-01 (+15d) | 2024-09-16 → 2024-10-01 (+15d) |  |  |  |
| 52 | **Rat validation** | 2024-09-16 → 2024-10-01 (+15d) | 2024-10-30 → 2024-11-15 (+16d) |  |  |  |
| 53 | deliver mem CPG | 2024-09-16 → 2024-10-01 (+15d) | 2024-10-11 → 2024-10-28 (+17d) |  |  |  |
| 54 | test mem CPG | 2024-10-14 → 2024-10-29 (+15d) | 2024-10-18 → 2024-11-04 (+17d) |  |  |  |
| 55 | integrate outs F+E | 2024-10-21 → 2024-11-05 (+15d) | 2024-10-23 → 2024-11-07 (+15d) |  |  |  |
| 56 | validate outs on rat | 2024-10-24 → 2024-11-08 (+15d) | 2024-10-30 → 2024-11-15 (+16d) |  |  |  |
| 57 | validated mem CPG | 2024-10-31 → 2024-11-18 (+18d) | 2024-10-31 → 2024-11-18 (+18d) |  |  |  |

## Version 8 (saved 2023-12-27)

Note of the change: updated gantt chart

Last finish 2024-11-18 → 2025-07-02 (+226d). Complete tasks 1 → 2.

Changed:

| ID | Task | Start | Finish | Duration | Complete | Predecessors |
| --- | --- | --- | --- | --- | --- | --- |
| 1 | **B-model** |  | 2024-03-01 → 2024-02-13 (-17d) | 51d → 40d | 12% → 11% |  |
| 6 | + 2nd leg | 2024-01-24 → 2023-12-18 (-37d) | 2024-01-25 → 2024-01-10 (-15d) | 2d → 5d |  | 4, 5 → none |
| 7 | Commisural Projections | 2024-01-26 → 2024-01-11 (-15d) | 2024-01-29 → 2024-01-12 (-17d) |  |  |  |
| 8 | Balance 2 legs | 2024-01-30 → 2024-01-15 (-15d) | 2024-01-31 → 2024-01-16 (-15d) |  |  |  |
| 9 | Debug 2 legs | 2024-02-01 → 2024-01-17 (-15d) | 2024-02-14 → 2024-01-30 (-15d) |  |  |  |
| 10 | Debug STDP complete model | 2024-02-19 → 2024-01-31 (-19d) | 2024-03-01 → 2024-02-13 (-17d) |  |  |  |
| 11 | Complete B-model | 2024-03-04 → 2024-02-14 (-19d) | 2024-03-04 → 2024-02-14 (-19d) |  |  |  |
| 12 | **Memristive devices** |  | 2024-04-30 → 2024-05-09 (+9d) | 90d → 95d | 1% → 2% |  |
| 13 | buy silver |  | 2023-12-19 → 2024-01-12 (+24d) | 10d → 15d | 10% → 15% |  |
| 14 | fabricate 1 mem | 2024-01-08 → 2024-01-15 (+7d) | 2024-01-12 → 2024-01-19 (+7d) |  |  |  |
| 15 | test 1 mem | 2024-01-15 → 2024-01-22 (+7d) | 2024-01-26 → 2024-02-02 (+7d) |  |  |  |
| 16 | fabricate 8 mem E | 2024-01-29 → 2024-02-05 (+7d) | 2024-02-09 → 2024-02-20 (+11d) |  |  |  |
| 17 | test 8 mem E | 2024-02-12 → 2024-02-21 (+9d) | 2024-02-27 → 2024-03-05 (+7d) |  |  |  |
| 18 | fubricate + 12 mems | 2024-02-28 → 2024-03-06 (+7d) | 2024-03-12 → 2024-03-19 (+7d) |  |  |  |
| 19 | 20 mems test F+E | 2024-03-13 → 2024-03-20 (+7d) | 2024-03-26 → 2024-04-02 (+7d) |  |  |  |
| 20 | fubricate 40 mems | 2024-03-27 → 2024-04-03 (+7d) | 2024-04-09 → 2024-04-16 (+7d) |  |  |  |
| 21 | test 40 mems | 2024-04-10 → 2024-04-17 (+7d) | 2024-04-30 → 2024-05-09 (+9d) |  |  |  |
| 22 | 40 mems (2 legs) | 2024-05-03 → 2024-05-10 (+7d) | 2024-05-03 → 2024-05-10 (+7d) |  |  |  |
| 23 | **Mem neurons** |  | 2024-07-01 → 2024-06-24 (-7d) | 135d → 130d | 0% → 12% |  |
| 25 | test task |  |  |  | 1% → 100% |  |
| 26 | negotiate mem 2 parameters | 2024-01-15 → 2024-01-22 (+7d) | 2024-01-15 → 2024-01-22 (+7d) |  |  |  |
| 27 | Rework mem neurons schematic | 2024-01-16 → 2023-12-04 (-43d) | 2024-01-29 → 2024-01-19 (-10d) | 10d → 22d | 1% → 30% | 26 → 24 |
| 28 | Design PCB E neurons | 2024-01-30 → 2024-01-23 (-7d) | 2024-02-07 → 2024-01-31 (-7d) |  |  | 27 → 26, 27 |
| 29 | Design PCB F neurons | 2024-02-08 → 2024-02-01 (-7d) | 2024-02-20 → 2024-02-09 (-11d) |  |  |  |
| 30 | Design PCB InE, InF | 2024-02-21 → 2024-02-12 (-9d) | 2024-02-27 → 2024-02-20 (-7d) |  |  |  |
| 31 | Design PCB 2nd leg | 2024-02-28 → 2024-02-21 (-7d) | 2024-03-12 → 2024-03-05 (-7d) |  |  |  |
| 32 | Simulation | 2024-03-13 → 2024-03-06 (-7d) | 2024-03-14 → 2024-03-07 (-7d) |  |  |  |
| 33 | Order 1st PCBs | 2024-03-15 → 2024-03-08 (-7d) | 2024-03-28 → 2024-03-21 (-7d) |  |  |  |
| 34 | Delivery 1st PCBs | 2024-03-29 → 2024-03-22 (-7d) | 2024-04-18 → 2024-04-11 (-7d) |  |  |  |
| 35 | Solder 1st PCBs | 2024-04-19 → 2024-04-12 (-7d) | 2024-05-20 → 2024-05-13 (-7d) |  |  |  |
| 36 | Redesign PCBs | 2024-05-21 → 2024-05-14 (-7d) | 2024-05-27 → 2024-05-20 (-7d) |  |  |  |
| 37 | Order 2nd PCBs | 2024-05-28 → 2024-05-21 (-7d) | 2024-06-10 → 2024-06-03 (-7d) |  |  |  |
| 38 | Solder 2nd PCBs | 2024-06-11 → 2024-06-04 (-7d) | 2024-06-24 → 2024-06-17 (-7d) |  |  |  |
| 39 | Test 2nd PCBs | 2024-06-25 → 2024-06-18 (-7d) | 2024-07-01 → 2024-06-24 (-7d) |  |  |  |
| 40 | Mem neurons | 2024-07-02 → 2024-06-25 (-7d) | 2024-07-02 → 2024-06-25 (-7d) |  |  |  |
| 41 | **Neurons+mems integration** | 2024-07-02 → 2025-02-12 (+225d) | 2024-09-30 → 2025-05-15 (+227d) |  |  |  |
| 42 | deliver mem neurons | 2024-07-02 → 2025-02-12 (+225d) | 2024-07-29 → 2025-03-11 (+225d) |  |  |  |
| 43 | integrate 1 neuron + 1 mem | 2024-07-30 → 2025-03-12 (+225d) | 2024-08-05 → 2025-03-18 (+225d) |  |  |  |
| 44 | test integration 1n + 1m | 2024-08-06 → 2025-03-19 (+225d) | 2024-08-12 → 2025-03-25 (+225d) |  |  |  |
| 45 | integrate 1 RG 4 neurons | 2024-08-13 → 2025-03-26 (+225d) | 2024-08-19 → 2025-04-01 (+225d) |  |  |  |
| 46 | test integrated RG | 2024-08-20 → 2025-04-02 (+225d) | 2024-09-02 → 2025-04-15 (+225d) |  |  |  |
| 47 | integrate 1 leg | 2024-09-03 → 2025-04-16 (+225d) | 2024-09-09 → 2025-04-22 (+225d) |  |  |  |
| 48 | test 1 leg | 2024-09-10 → 2025-04-23 (+225d) | 2024-09-16 → 2025-04-29 (+225d) |  |  |  |
| 49 | integrate 2 legs | 2024-09-17 → 2025-04-30 (+225d) | 2024-09-23 → 2025-05-08 (+227d) |  |  |  |
| 50 | test 2 legs | 2024-09-24 → 2025-05-09 (+227d) | 2024-09-30 → 2025-05-15 (+227d) |  |  |  |
| 51 | integrated mem CPG | 2024-10-01 → 2025-05-16 (+227d) | 2024-10-01 → 2025-05-16 (+227d) |  |  |  |
| 52 | **Rat validation** | 2024-10-01 → 2025-05-16 (+227d) | 2024-11-15 → 2025-07-01 (+228d) |  |  |  |
| 53 | deliver mem CPG | 2024-10-01 → 2025-05-16 (+227d) | 2024-10-28 → 2025-06-12 (+227d) |  |  |  |
| 54 | test mem CPG | 2024-10-29 → 2025-06-13 (+227d) | 2024-11-04 → 2025-06-19 (+227d) |  |  |  |
| 55 | integrate outs F+E | 2024-11-05 → 2025-06-20 (+227d) | 2024-11-07 → 2025-06-24 (+229d) |  |  |  |
| 56 | validate outs on rat | 2024-11-08 → 2025-06-25 (+229d) | 2024-11-15 → 2025-07-01 (+228d) |  |  |  |
| 57 | validated mem CPG | 2024-11-18 → 2025-07-02 (+226d) | 2024-11-18 → 2025-07-02 (+226d) |  |  |  |

## Version 9 (saved 2024-01-04)

Note of the change: updated rainy PP

Last finish 2025-07-02 → 2024-11-13 (-231d). Complete tasks 2 → 3.

Changed:

| ID | Task | Start | Finish | Complete | Other |
| --- | --- | --- | --- | --- | --- |
| 1 | **B-model** |  |  | 11% → 27% |  |
| 2 | Ia STDP fix |  |  | 40% → 100% |  |
| 12 | **Memristive devices** |  |  | 2% → 3% |  |
| 13 | buy silver foil |  |  | 15% → 20% | was named buy silver |
| 41 | **Neurons+mems integration** | 2025-02-12 → 2024-06-26 (-231d) | 2025-05-15 → 2024-09-24 (-233d) |  |  |
| 42 | deliver mem neurons | 2025-02-12 → 2024-06-26 (-231d) | 2025-03-11 → 2024-07-23 (-231d) |  |  |
| 43 | integrate 1 neuron + 1 mem | 2025-03-12 → 2024-07-24 (-231d) | 2025-03-18 → 2024-07-30 (-231d) |  |  |
| 44 | test integration 1n + 1m | 2025-03-19 → 2024-07-31 (-231d) | 2025-03-25 → 2024-08-06 (-231d) |  |  |
| 45 | integrate 1 RG 4 neurons | 2025-03-26 → 2024-08-07 (-231d) | 2025-04-01 → 2024-08-13 (-231d) |  |  |
| 46 | test integrated RG | 2025-04-02 → 2024-08-14 (-231d) | 2025-04-15 → 2024-08-27 (-231d) |  |  |
| 47 | integrate 1 leg | 2025-04-16 → 2024-08-28 (-231d) | 2025-04-22 → 2024-09-03 (-231d) |  |  |
| 48 | test 1 leg | 2025-04-23 → 2024-09-04 (-231d) | 2025-04-29 → 2024-09-10 (-231d) |  |  |
| 49 | integrate 2 legs | 2025-04-30 → 2024-09-11 (-231d) | 2025-05-08 → 2024-09-17 (-233d) |  |  |
| 50 | test 2 legs | 2025-05-09 → 2024-09-18 (-233d) | 2025-05-15 → 2024-09-24 (-233d) |  |  |
| 51 | integrated mem CPG | 2025-05-16 → 2024-09-25 (-233d) | 2025-05-16 → 2024-09-25 (-233d) |  |  |
| 52 | **Rat validation** | 2025-05-16 → 2024-09-26 (-232d) | 2025-07-01 → 2024-11-12 (-231d) |  |  |
| 53 | deliver mem CPG | 2025-05-16 → 2024-09-26 (-232d) | 2025-06-12 → 2024-10-23 (-232d) |  |  |
| 54 | test mem CPG | 2025-06-13 → 2024-10-24 (-232d) | 2025-06-19 → 2024-10-30 (-232d) |  |  |
| 55 | integrate outs F+E | 2025-06-20 → 2024-10-31 (-232d) | 2025-06-24 → 2024-11-04 (-232d) |  |  |
| 56 | validate outs on rat | 2025-06-25 → 2024-11-05 (-232d) | 2025-07-01 → 2024-11-12 (-231d) |  |  |
| 57 | validated mem CPG | 2025-07-02 → 2024-11-13 (-231d) | 2025-07-02 → 2024-11-13 (-231d) |  |  |
