# mem spinal cord project

How a schedule from GanttProject changed from version to version. A marks actual dates.

## Version 1 (saved 2023-11-22)

Note of the change: started gantt dia

| ID | WBS | Task | Duration | Start | Finish | Predecessors |
| --- | --- | --- | --- | --- | --- | --- |
| 1 | 1 | **B-model develpment** | 37d | 2023-11-22 | 2024-01-15 |  |
| 2 |  | Ia STDP fix | 10d | 2023-11-22 | 2023-12-05 |  |
| 3 |  | Cut STDP fix | 5d | 2023-12-06 | 2023-12-12 | 2 |
| 4 |  | BS->F STDP | 2d | 2023-12-13 | 2023-12-14 | 3 |
| 5 |  | BS->E STDP | 1d | 2023-12-15 | 2023-12-15 | 4 |
| 6 |  | Add 2nd leg | 1d | 2023-12-18 | 2023-12-18 | 3, 4, 5 |
| 7 |  | Commisural projections | 1d | 2023-12-19 | 2023-12-19 | 6 |
| 8 |  | Balance legs | 2d | 2023-12-20 | 2023-12-21 | 7 |
| 9 |  | Debug 2 legs | 5d | 2023-12-22 | 2023-12-28 | 8 |
| 10 |  | Debug STDP complete model | 10d | 2023-12-29 | 2024-01-15 | 9 |
| 11 |  | Complete B-model | 0d | 2024-01-16 | 2024-01-16 | 10 |
| 12 | 2 | **Memristors** | 57d | 2023-11-22 | 2024-02-12 |  |
| 13 |  | 1 memristor | 2d | 2023-11-22 | 2023-11-23 |  |
| 14 |  | 1 memristor test | 5d | 2023-11-24 | 2023-11-30 | 13 |
| 15 |  | 8 mem fubrication (E) | 5d | 2023-12-01 | 2023-12-07 | 14 |
| 16 |  | 8 mem test (E) | 10d | 2023-12-08 | 2023-12-21 | 15 |
| 17 |  | + 12 mem fubrication | 5d | 2023-12-22 | 2023-12-28 | 16 |
| 18 |  | 20 mem test (F+E) | 10d | 2023-12-29 | 2024-01-15 | 17 |
| 19 |  | 40 mems fubrication | 5d | 2024-01-16 | 2024-01-22 | 18 |
| 20 |  | 40 mems test | 15d | 2024-01-23 | 2024-02-12 | 19 |
| 21 |  | 40 mems (2 legs) | 0d | 2024-02-13 | 2024-02-13 | 20 |
| 22 | 3 | **Mem neurons** | 35d | 2023-11-27 | 2024-01-16 |  |
| 23 |  | Rework mem neuron sch | 10d | 2023-11-27 | 2023-12-08 |  |
| 24 |  | Design E neurons | 5d | 2023-12-11 | 2023-12-15 | 23 |
| 25 |  | Design F neurons | 5d | 2023-12-18 | 2023-12-22 | 24 |
| 26 |  | Design InE, InF | 5d | 2023-12-25 | 2023-12-29 | 25 |
| 27 |  | Design 2nd leg | 10d | 2024-01-03 | 2024-01-16 | 26 |

## Version 2 (saved 2023-11-23)

Note of the change: carry on with gantt dia

Last finish 2024-02-13 → 2024-02-14 (+1d).

Added:

| ID | Task | Duration | Start | Finish | Predecessors |
| --- | --- | --- | --- | --- | --- |
| 28 | Order PCBs | 5d | 2024-01-17 | 2024-01-23 | 27 |
| 29 | Assemble PCBs | 15d | 2024-01-24 | 2024-02-13 | 28 |
| 30 | Completed mem neurons | 0d | 2024-02-14 | 2024-02-14 | 29 |

Changed:

| ID | Task | Finish | Duration |
| --- | --- | --- | --- |
| 22 | **Mem neurons** | 2024-01-16 → 2024-02-13 (+28d) | 35d → 55d |

## Version 3 (saved 2023-11-27)

Note of the change: completed sunny gantt

Last finish 2024-02-14 → 2024-04-26 (+72d).

Added:

| ID | Task | Duration | Start | Finish | Predecessors |
| --- | --- | --- | --- | --- | --- |
| 31 | **Neurons+mems integration** | 34d | 2024-02-14 | 2024-04-03 | 22 |
| 32 | deliver mem neurons | 10d | 2024-02-14 | 2024-02-29 |  |
| 33 | integrate 1 neuron 1 mem | 3d | 2024-03-01 | 2024-03-05 | 32 |
| 34 | integrate 1 RG | 5d | 2024-03-06 | 2024-03-12 | 33 |
| 35 | test integrated RG | 5d | 2024-03-13 | 2024-03-19 | 34 |
| 36 | integrate 1 leg | 3d | 2024-03-20 | 2024-03-22 | 35 |
| 37 | test 1 leg | 2d | 2024-03-25 | 2024-03-26 | 36 |
| 38 | integrate 2 legs | 3d | 2024-03-27 | 2024-03-29 | 37 |
| 39 | test 2 legs | 3d | 2024-04-01 | 2024-04-03 | 38 |
| 40 | integrated 2 legs | 0d | 2024-04-04 | 2024-04-04 | 39 |
| 41 | **Rat validation** | 16d | 2024-04-04 | 2024-04-25 | 31 |
| 42 | deliver mem cpg | 10d | 2024-04-04 | 2024-04-17 |  |
| 43 | test mem cpg | 3d | 2024-04-18 | 2024-04-22 | 42 |
| 44 | integrate outs (F+E) | 1d | 2024-04-23 | 2024-04-23 | 43 |
| 45 | validate outs on rat | 2d | 2024-04-24 | 2024-04-25 | 44 |
| 46 | validated mem cpg | 0d | 2024-04-26 | 2024-04-26 | 45 |

## Version 4 (saved 2023-11-27)

Note of the change: completed sunny gantt

Last finish stays 2024-04-26.

Changed:

| ID | Task | Complete |
| --- | --- | --- |
| 1 | **B-model develpment** | 0% → 2% |
| 2 | Ia STDP fix | 0% → 10% |
